# Task3

Schedule from MS Project, 2022-03-01 to 2022-07-28, status date 2022-04-22, costs in ₽, A marks actual dates.
HP
Карта города на основе модуля отображения. 6 месяцев. 50 000 руб.

## Calendars

- Стандартный: Mon-Fri 09:00-13:00, 14:00-18:00; Sat-Sun off. Exceptions (off unless hours are given): 2022-03-07 to 2022-03-08 (8 Марта), 2022-05-02 to 2022-05-03 (День Труда), 2022-05-09 to 2022-05-10 (День Победы), 2022-06-13 (День России).

## Resources

| Resource | Group | Rate | Cost per use |
| --- | --- | --- | --- |
| Ведущий программист | Программирование | 10 | 100 |
| Программист#1 | Программирование | 7 | 50 |
| Программист#2 | Программирование | 7 | 50 |
| Программист#3 | Программирование | 7 | 50 |
| Программист#4 | Программирование | 7 | 50 |
| Системный аналитик | Анализ | 20 | 300 |
| Художник-дизайнер | Дизайн | 8 | 70 |
| Технический писатель | Документация | 5 | 20 |
| Web-дизайнер | Internet | 7 | 50 |
| 3D аниматор | Дизайн | 8 | 70 |
| Мультимедиа-корреспондент | М-медиа | 3 | 20 |
| Наборщик данных#1 | Ввод данных | 2 | 10 |
| Наборщик данных#2 | Ввод данных | 2 | 10 |
| Наборщик данных#3 | Ввод данных | 2 | 10 |
| Наборщик данных#4 | Ввод данных | 2 | 10 |
| Наборщик данных#5 | Ввод данных | 2 | 10 |
| Дополнительный сервер | Дополнительный | 2 |  |

## Schedule

| ID | WBS | Task | Type | Duration | Start | Finish | Predecessors | Complete | Remaining | Baseline start | Baseline finish | Baseline duration | Total slack | Free slack | Resources | Work | Actual work | Cost | Baseline cost | Actual cost |
| --- | --- | --- | --- | --- | --- | --- | --- | --- | --- | --- | --- | --- | --- | --- | --- | --- | --- | --- | --- | --- |
| 1 | 1 | Начало проекта | milestone | 0w | 2022-03-01 09:00 A | 2022-03-01 09:00 A |  | 100% |  | 2022-03-01 09:00 | 2022-03-01 09:00 | 0w |  |  |  |  |  |  |  |  |
| 2 | 2 | **Создание интерфейса** |  | 78.57d | 2022-03-01 09:00 A | 2022-06-28 14:33 | 1 | 87% | 10.59d | 2022-03-01 09:00 | 2022-06-28 14:33 | 78.57d | 0d |  |  | 592h | 352h | 7,106 | 5,650 | 5,096 |
| 3 | 2.1 | **Разработка дизайна интерфейса** |  | 27.12d | 2022-03-01 09:00 A | 2022-04-11 10:00 A |  | 100% |  | 2022-03-01 09:00 | 2022-04-07 15:00 | 25.62d |  |  |  | 352h | 352h | 4,226 | 2,770 | 4,226 |
| 4 | 2.1.1 | Разработка 2D графических элементов |  | 4.12w | 2022-03-01 09:00 A | 2022-03-31 18:00 A |  | 100% |  | 2022-03-01 09:00 | 2022-03-24 12:00 | 3w |  |  | Художник-дизайнер | 132h | 132h | 1,126 | 1,030 | 1,126 |
| 5 | 2.1.2 | Разработка 3D графических элементов |  | 2.2w | 2022-03-01 09:00 A | 2022-03-18 11:00 A | 4SS | 100% |  | 2022-03-01 09:00 | 2022-03-17 11:00 | 2w |  |  | 3D аниматор | 88h | 88h | 774 | 710 | 774 |
| 6 | 2.1.3 | Создание заставки |  | 3.3w | 2022-03-17 12:00 A | 2022-04-11 10:00 A | 5 | 100% |  | 2022-03-17 12:00 | 2022-04-07 15:00 | 3w |  |  | 3D аниматор | 132h | 132h | 1,126 | 1,030 | 1,126 |
| 7 | 2.2 | Программирование интерфейса |  | 1.5w | 2022-06-17 09:33 | 2022-06-28 14:33 | 3, 12 |  |  | 2022-06-17 09:33 | 2022-06-28 14:33 | 1.5w | 0d |  | Программист#3; Программист#4; Программист#1; Программист#2 | 240h |  | 1,880 | 1,880 |  |
| 8 | 3 | **Построение базы объектов** |  | 85.12d | 2022-03-24 14:00 A | 2022-07-28 15:00 |  | 25% | 63.72d | 2022-03-24 14:00 | 2022-07-28 15:00 | 85.12d | 0.03d |  | Дополнительный сервер | 5745h | 1022.7h | 15,580 | 15,580 | 5,045.4 |
| 9 | 3.1 | Анализ и построение структуры базы объектов |  | 2w | 2022-03-24 14:00 A | 2022-04-07 15:00 A |  | 100% |  | 2022-03-24 14:00 | 2022-04-07 15:00 | 2w |  |  | Системный аналитик | 80h | 80h | 1,900 | 1,900 | 1,900 |
| 10 | 3.2 | Программирование средств обработки базы объектов |  | 3w | 2022-04-07 15:00 A | 2022-04-28 15:00 | 9 | 76% | 0.72w | 2022-04-07 15:00 | 2022-04-28 15:00 | 3w | 0.03d | 0d | Программист#3; Программист#4 | 240h | 182h | 1,780 | 1,780 | 1,374 |
| 11 | 3.3 | Наполнение базы объектов |  | 12w | 2022-04-28 15:00 | 2022-07-28 15:00 | 10 |  |  | 2022-04-28 15:00 | 2022-07-28 15:00 | 12w | 0.03d |  | Наборщик данных#1; Наборщик данных#2; Наборщик данных#3; Наборщик данных#4; Наборщик данных#5 | 2400h |  | 4,850 | 4,850 |  |
| 12 | 4 | **Создание ядра GIS** |  | 71.07d | 2022-03-01 09:00 A | 2022-06-17 09:33 |  | 47% | 37.54d | 2022-03-01 09:00 | 2022-06-17 09:33 | 71.07d | 0d |  |  | 1880h | 600.72h | 18,139.56 | 18,139.56 | 7,563.02 |
| 13 | 4.1 | Анализ и проектирование ядра |  | 3.05w | 2022-03-01 09:00 A | 2022-03-24 12:00 A |  | 100% |  | 2022-03-01 09:00 | 2022-03-24 12:00 | 3.05w |  |  | Ведущий программист; Системный аналитик | 240h | 240h | 4,000 | 4,000 | 4,000 |
| 14 | 4.2 | Создание модели ядра |  | 3.41w | 2022-03-24 12:00 A | 2022-04-18 12:13 | 13 | 80% | 0.68w | 2022-03-24 12:00 | 2022-04-18 12:13 | 3.41w | 4.6d | 0d | Ведущий программист; Программист#1; Программист#2 | 400h | 323.96h | 3,396.7 | 3,396.7 | 2,785.64 |
| 15 | 4.3 | Тестирование модели ядра |  | 1w | 2022-04-18 12:13 A | 2022-04-25 12:13 | 14 | 92% | 0.08w | 2022-04-18 12:13 | 2022-04-25 12:13 | 1w | 0d |  | Программист#1 | 40h | 36.77h | 330 | 330 | 307.38 |
| 16 | 4.4 | Создание рабочей версии ядра |  | 6.73w | 2022-04-25 12:13 | 2022-06-17 09:33 | 15 |  |  | 2022-04-25 12:13 | 2022-06-17 09:33 | 6.73w | 0d |  | Ведущий программист; Программист#1; Программист#2; Программист#3; Программист#4 | 1200h |  | 9,412.87 | 9,412.87 |  |
| 17 | 5 | Создание мультемедиа-наполнения |  | 6w | 2022-04-07 15:00 A | 2022-05-26 12:00 | 3 | 37% | 3.77w | 2022-04-07 15:00 | 2022-05-26 12:00 | 6w | 44.28d |  | Мультимедиа-корреспондент | 240h | 89h | 740 | 740 | 287 |
| 18 | 6 | Создание справочной системы |  | 2w | 2022-07-07 17:33 | 2022-07-22 09:33 | 7 |  |  | 2022-07-07 17:33 | 2022-07-22 09:33 | 2w | 4.58d |  | Технический писатель | 80h |  | 420 | 420 |  |
| 19 | 7 | **Создание руководства пользователя** |  | 17.25d | 2022-06-14 14:33 | 2022-07-07 16:33 | 7FS-10d |  |  | 2022-06-14 14:33 | 2022-07-07 16:33 | 17.25d | 0d |  |  | 160h |  | 1,010 | 1,010 |  |
| 20 | 7.1 | Разработка дизайна руководства |  | 1w | 2022-06-14 14:33 | 2022-06-21 14:33 |  |  |  | 2022-06-14 14:33 | 2022-06-21 14:33 | 1w | 0d |  | Художник-дизайнер | 40h |  | 390 | 390 |  |
| 21 | 7.2 | Написание руководства пользователя |  | 3w | 2022-06-16 14:33 | 2022-07-07 16:33 | 20SS+2d |  |  | 2022-06-16 14:33 | 2022-07-07 16:33 | 3w | 0d |  | Технический писатель | 120h |  | 620 | 620 |  |
| 22 | 8 | **Создание web-сайта и поддержка** |  | 22.95d | 2022-06-16 14:33 | 2022-07-19 14:07 |  |  |  | 2022-06-16 14:33 | 2022-07-19 14:07 | 22.95d | 0d |  |  | 248h |  | 2,106 | 2,106 |  |
| 23 | 8.1 | Разработка структуры сайта |  | 1d | 2022-06-16 14:33 | 2022-06-17 14:33 | 21SS |  |  | 2022-06-16 14:33 | 2022-06-17 14:33 | 1d | 0d |  | Web-дизайнер | 8h |  | 106 | 106 |  |
| 24 | 8.2 | Разработка дизайна сайта |  | 1.34w | 2022-06-17 14:33 | 2022-06-28 11:07 | 23 |  |  | 2022-06-17 14:33 | 2022-06-28 11:07 | 1.34w | 0d |  | 3D аниматор; Web-дизайнер; Художник-дизайнер | 120h |  | 1,110 | 1,110 |  |
| 25 | 8.3 | Наполнение сайта |  | 3w | 2022-06-28 11:07 | 2022-07-19 14:07 | 24 |  |  | 2022-06-28 11:07 | 2022-07-19 14:07 | 3w | 0d |  | Web-дизайнер | 120h |  | 890 | 890 |  |
| 26 | 9 | Тестирование сайта |  | 2.43w | 2022-07-12 14:07 | 2022-07-28 15:12 | 22FS-1w |  |  | 2022-07-12 14:07 | 2022-07-28 15:12 | 2.43w | 0d |  | Ведущий программист; Программист#1; Программист#2; Программист#3; Программист#4 | 480h |  | 3,945.85 | 3,945.85 |  |
| 27 | 10 | Сдача сайта в эксплуатацию | milestone | 0w | 2022-07-28 15:12 | 2022-07-28 15:12 | 26 |  |  | 2022-07-28 15:12 | 2022-07-28 15:12 | 0w | 0d |  |  |  |  |  |  |  |

| ID | WBS | Task | Type | Duration | Start | Finish | Complete | Remaining | Baseline start | Baseline finish | Baseline duration | Total slack | Constraint | Resources | Work | Actual work | Cost | Baseline cost | Actual cost |
| --- | --- | --- | --- | --- | --- | --- | --- | --- | --- | --- | --- | --- | --- | --- | --- | --- | --- | --- | --- |
| 28 | 11 | **Совещание** |  | 98.12d | 2022-03-02 09:00 A | 2022-07-27 10:00 | 36% | 62.44d | 2022-03-02 09:00 | 2022-07-27 10:00 | 98.12d | 0d |  |  | 121h | 54h | 939 | 1,342 | 460 |
| 29 | 11.1 | Совещание 1 | manual | 1h | 2022-03-02 09:00 A | 2022-03-02 10:00 A | 100% |  | 2022-03-02 09:00 | 2022-03-02 10:00 | 1h |  | start no earlier than 2022-03-02 09:00 | 3D аниматор; Web-дизайнер; Ведущий программист; Мультимедиа-корреспондент; Системный аналитик [70%]; Технический писатель; Художник-дизайнер | 7h | 7h | 61 | 61 | 61 |
| 30 | 11.2 | Совещание 2 | manual | 1h | 2022-03-09 09:00 A | 2022-03-09 10:00 A | 100% |  | 2022-03-09 09:00 | 2022-03-09 10:00 | 1h |  | start no earlier than 2022-03-09 09:00 | Web-дизайнер; Ведущий программист; Мультимедиа-корреспондент; Системный аналитик; Технический писатель; Художник-дизайнер | 6h | 6h | 53 | 61 | 53 |
| 31 | 11.3 | Совещание 3 | manual | 1h | 2022-03-16 09:00 A | 2022-03-16 10:00 A | 100% |  | 2022-03-16 09:00 | 2022-03-16 10:00 | 1h |  | start no earlier than 2022-03-16 09:00 | 3D аниматор; Web-дизайнер; Ведущий программист; Мультимедиа-корреспондент; Системный аналитик; Технический писатель; Художник-дизайнер | 7h | 7h | 61 | 61 | 61 |
| 32 | 11.4 | Совещание 4 | manual | 1h | 2022-03-23 09:00 A | 2022-03-23 10:00 A | 100% |  | 2022-03-23 09:00 | 2022-03-23 10:00 | 1h |  | start no earlier than 2022-03-23 09:00 | 3D аниматор; Web-дизайнер; Ведущий программист; Мультимедиа-корреспондент; Системный аналитик; Технический писатель; Художник-дизайнер | 7h | 7h | 61 | 61 | 61 |
| 33 | 11.5 | Совещание 5 | manual | 1h | 2022-03-30 09:00 A | 2022-03-30 10:00 A | 100% |  | 2022-03-30 09:00 | 2022-03-30 10:00 | 1h |  | start no earlier than 2022-03-30 09:00 | 3D аниматор; Web-дизайнер; Ведущий программист; Мультимедиа-корреспондент; Системный аналитик; Технический писатель; Художник-дизайнер | 7h | 7h | 61 | 61 | 61 |
| 34 | 11.6 | Совещание 6 | manual | 1h | 2022-04-06 09:00 A | 2022-04-06 10:00 A | 100% |  | 2022-04-06 09:00 | 2022-04-06 10:00 | 1h |  | start no earlier than 2022-04-06 09:00 | 3D аниматор; Web-дизайнер; Ведущий программист; Мультимедиа-корреспондент; Системный аналитик; Технический писатель; Художник-дизайнер | 7h | 7h | 61 | 61 | 61 |
| 35 | 11.7 | Совещание 7 | manual | 1h | 2022-04-13 09:00 A | 2022-04-13 10:00 A | 100% |  | 2022-04-13 09:00 | 2022-04-13 10:00 | 1h |  | start no earlier than 2022-04-13 09:00 | 3D аниматор; Web-дизайнер; Ведущий программист; Мультимедиа-корреспондент; Системный аналитик; Технический писатель; Художник-дизайнер | 7h | 7h | 61 | 61 | 61 |
| 36 | 11.8 | Совещание 8 | manual | 1h | 2022-04-20 09:00 A | 2022-04-20 10:00 A | 100% |  | 2022-04-20 09:00 | 2022-04-20 10:00 | 1h |  | start no earlier than 2022-04-20 09:00 | 3D аниматор; Web-дизайнер; Ведущий программист; Мультимедиа-корреспондент; Технический писатель; Художник-дизайнер | 6h | 6h | 41 | 61 | 41 |
| 37 | 11.9 | Совещание 9 | manual | 1h | 2022-04-27 09:00 | 2022-04-27 10:00 |  |  | 2022-04-27 09:00 | 2022-04-27 10:00 | 1h |  | start no earlier than 2022-04-27 09:00 | 3D аниматор; Web-дизайнер; Ведущий программист; Мультимедиа-корреспондент; Технический писатель; Художник-дизайнер | 6h |  | 41 | 61 |  |
| 38 | 11.10 | Совещание 10 | manual | 1h | 2022-05-04 09:00 | 2022-05-04 10:00 |  |  | 2022-05-04 09:00 | 2022-05-04 10:00 | 1h |  | start no earlier than 2022-05-04 09:00 | 3D аниматор; Web-дизайнер; Ведущий программист; Мультимедиа-корреспондент; Технический писатель; Художник-дизайнер | 6h |  | 41 | 61 |  |
| 39 | 11.11 | Совещание 11 | manual | 1h | 2022-05-11 09:00 | 2022-05-11 10:00 |  |  | 2022-05-11 09:00 | 2022-05-11 10:00 | 1h |  | start no earlier than 2022-05-11 09:00 | 3D аниматор; Web-дизайнер; Ведущий программист; Мультимедиа-корреспондент; Технический писатель; Художник-дизайнер | 6h |  | 41 | 61 |  |
| 40 | 11.12 | Совещание 12 | manual | 1h | 2022-05-18 09:00 | 2022-05-18 10:00 |  |  | 2022-05-18 09:00 | 2022-05-18 10:00 | 1h |  | start no earlier than 2022-05-18 09:00 | 3D аниматор; Web-дизайнер; Ведущий программист; Мультимедиа-корреспондент; Технический писатель; Художник-дизайнер | 6h |  | 41 | 61 |  |
| 41 | 11.13 | Совещание 13 | manual | 1h | 2022-05-25 09:00 | 2022-05-25 10:00 |  |  | 2022-05-25 09:00 | 2022-05-25 10:00 | 1h |  | start no earlier than 2022-05-25 09:00 | 3D аниматор; Web-дизайнер; Ведущий программист; Мультимедиа-корреспондент; Технический писатель; Художник-дизайнер | 6h |  | 41 | 61 |  |
| 42 | 11.14 | Совещание 14 | manual | 1h | 2022-06-01 09:00 | 2022-06-01 10:00 |  |  | 2022-06-01 09:00 | 2022-06-01 10:00 | 1h |  | start no earlier than 2022-06-01 09:00 | 3D аниматор; Web-дизайнер; Ведущий программист; Мультимедиа-корреспондент; Технический писатель; Художник-дизайнер | 6h |  | 41 | 61 |  |
| 43 | 11.15 | Совещание 15 | manual | 1h | 2022-06-08 09:00 | 2022-06-08 10:00 |  |  | 2022-06-08 09:00 | 2022-06-08 10:00 | 1h |  | start no earlier than 2022-06-08 09:00 | 3D аниматор; Web-дизайнер; Ведущий программист; Технический писатель; Художник-дизайнер | 5h |  | 38 | 61 |  |
| 44 | 11.16 | Совещание 16 | manual | 1h | 2022-06-15 09:00 | 2022-06-15 10:00 |  |  | 2022-06-15 09:00 | 2022-06-15 10:00 | 1h |  | start no earlier than 2022-06-15 09:00 | 3D аниматор; Web-дизайнер; Ведущий программист; Технический писатель; Художник-дизайнер | 5h |  | 38 | 61 |  |
| 45 | 11.17 | Совещание 17 | manual | 1h | 2022-06-22 09:00 | 2022-06-22 10:00 |  |  | 2022-06-22 09:00 | 2022-06-22 10:00 | 1h |  | start no earlier than 2022-06-22 09:00 | 3D аниматор; Web-дизайнер; Ведущий программист; Технический писатель; Художник-дизайнер | 5h |  | 38 | 61 |  |
| 46 | 11.18 | Совещание 18 | manual | 1h | 2022-06-29 09:00 | 2022-06-29 10:00 |  |  | 2022-06-29 09:00 | 2022-06-29 10:00 | 1h |  | start no earlier than 2022-06-29 09:00 | 3D аниматор; Web-дизайнер; Ведущий программист; Технический писатель; Художник-дизайнер | 5h |  | 38 | 61 |  |
| 47 | 11.19 | Совещание 19 | manual | 1h | 2022-07-06 09:00 | 2022-07-06 10:00 |  |  | 2022-07-06 09:00 | 2022-07-06 10:00 | 1h |  | start no earlier than 2022-07-06 09:00 | Web-дизайнер; Ведущий программист; Технический писатель | 3h |  | 22 | 61 |  |
| 48 | 11.20 | Совещание 20 | manual | 1h | 2022-07-13 09:00 | 2022-07-13 10:00 |  |  | 2022-07-13 09:00 | 2022-07-13 10:00 | 1h |  | start no earlier than 2022-07-13 09:00 | Web-дизайнер; Ведущий программист; Технический писатель | 3h |  | 22 | 61 |  |
| 49 | 11.21 | Совещание 21 | manual | 1h | 2022-07-20 09:00 | 2022-07-20 10:00 |  |  | 2022-07-20 09:00 | 2022-07-20 10:00 | 1h |  | start no earlier than 2022-07-20 09:00 | Web-дизайнер; Ведущий программист; Технический писатель | 3h |  | 22 | 61 |  |
| 50 | 11.22 | Совещание 22 | manual | 1h | 2022-07-27 09:00 | 2022-07-27 10:00 |  |  | 2022-07-27 09:00 | 2022-07-27 10:00 | 1h |  | start no earlier than 2022-07-27 09:00 | Ведущий программист; Технический писатель | 2h |  | 15 | 61 |  |
